# 新闻头条-范围规划

How a schedule from MS Project changed from version to version. A marks actual dates.

## Version 1 (saved 2020-04-15)

Note of the change: zhluxuan mpp

| ID | WBS | Task | Duration | Start | Finish | Predecessors |
| --- | --- | --- | --- | --- | --- | --- |
| 1 | 1 | **论证** | 9d | 2020-03-06 | 2020-03-18 |  |
| 2 |  | 项目愿景 | 1d | 2020-03-06 | 2020-03-06 |  |
| 3 |  | 商业机会 | 1d | 2020-03-06 | 2020-03-06 |  |
| 4 |  | 问题描述 | 1d | 2020-03-09 | 2020-03-09 |  |
| 5 |  | 用户分析 | 1d | 2020-03-10 | 2020-03-10 |  |
| 6 |  | 技术可行性分析 | 1d | 2020-03-11 | 2020-03-11 |  |
| 7 |  | 资源分析 | 1d | 2020-03-12 | 2020-03-12 |  |
| 8 |  | 收益分析 | 1d | 2020-03-10 | 2020-03-10 |  |
| 9 |  | 墨刀原型 | 3d | 2020-03-16 | 2020-03-18 |  |
| 10 | 2 | **启动** | 6d | 2020-03-19 | 2020-03-26 |  |
| 11 |  | 组建核心团队 | 1d | 2020-03-19 | 2020-03-19 |  |
| 12 |  | 干系人登记册 | 1d | 2020-03-20 | 2020-03-20 | 11 |
| 13 |  | 里程碑 | 1d | 2020-03-23 | 2020-03-23 | 12 |
| 14 |  | 制定项目章程 | 1d | 2020-03-23 | 2020-03-23 | 12 |
| 15 |  | 项目启动大会 | 1d | 2020-03-24 | 2020-03-24 | 14 |
| 16 | 3 | **规划** | 13d | 2020-03-26 | 2020-04-13 |  |
| 17 | 3.1 | **规划范围** | 2d | 2020-03-26 | 2020-03-27 |  |
| 18 |  | 制定需求说明书 | 1d | 2020-03-25 | 2020-03-25 | 15 |
| 19 |  | 界面设计 | 2d | 2020-03-26 | 2020-03-27 | 18 |
| 20 |  | 详细设计说明书 | 1d | 2020-03-26 | 2020-03-26 | 18 |
| 21 |  | 范围说明书 | 1d | 2020-03-26 | 2020-03-26 | 18 |
| 22 |  | 创建WBS | 1d | 2020-03-26 | 2020-03-26 | 18 |
| 23 |  | 形成范围基准 | 1d | 2020-03-27 | 2020-03-27 | 22 |
| 24 | 3.2 | **规划时间** | 3d | 2020-03-27 | 2020-03-31 |  |
| 25 |  | 排列工作包顺序 | 1d | 2020-03-27 | 2020-03-27 |  |
| 26 |  | 估算资源 | 1d | 2020-03-27 | 2020-03-27 |  |
| 27 |  | 估算持续时间 | 1d | 2020-03-27 | 2020-03-27 |  |
| 28 |  | 制定制度计划 | 1d | 2020-03-27 | 2020-03-27 |  |
| 29 |  | 形成进度基准 | 2d | 2020-03-30 | 2020-03-31 | 28 |
| 30 | 3.3 | **规划成本** | 3d | 2020-04-01 | 2020-04-03 |  |
| 31 |  | 项目成本估量 | 1d | 2020-04-01 | 2020-04-01 | 29 |
| 32 |  | 项目预算 | 1d | 2020-04-02 | 2020-04-02 | 31 |
| 33 |  | 形成范围基准 | 1d | 2020-04-03 | 2020-04-03 | 32 |
| 34 | 3.4 | **规划质量** | 2d | 2020-04-06 | 2020-04-07 |  |
| 35 |  | 制定测试计划 | 1d | 2020-04-06 | 2020-04-06 | 33 |
| 36 |  | 制定测试用例 | 1d | 2020-04-07 | 2020-04-07 | 35 |
| 37 | 3.5 | **规划人力资源** | 2d | 2020-04-08 | 2020-04-09 |  |
| 38 |  | 制定人力资源计划 | 1d | 2020-04-08 | 2020-04-08 |  |
| 39 |  | 制定人员配备管理 | 1d | 2020-04-09 | 2020-04-09 | 38 |
| 40 | 3.6 | **规划沟通** | 1d | 2020-04-09 | 2020-04-09 |  |
| 41 |  | 制定沟通管理计划 | 1d | 2020-04-09 | 2020-04-09 |  |
| 42 | 3.7 | **规划风险** | 3d | 2020-04-09 | 2020-04-13 |  |
| 43 |  | 识别风险 | 1d | 2020-04-09 | 2020-04-09 |  |
| 44 |  | 风险分析 | 1d | 2020-04-10 | 2020-04-10 | 43 |
| 45 |  | 制定风险登记册 | 1d | 2020-04-13 | 2020-04-13 | 44 |
| 46 |  | 规划整合 | 1d | 2020-04-13 | 2020-04-13 |  |
| 48 | 4 | **干系人** | 3d | 2020-04-14 | 2020-04-16 |  |
| 49 |  | 发布项目信息 | 1d | 2020-04-14 | 2020-04-14 | 46 |
| 50 |  | 干系人沟通 | 1d | 2020-04-15 | 2020-04-15 | 49 |
| 51 |  | 干系人手册 | 1d | 2020-04-16 | 2020-04-16 | 50 |
| 52 | 5 | **执行** | 40d | 2020-04-16 | 2020-06-10 |  |
| 53 | 5.1 | **团队建设** | 6d | 2020-04-16 | 2020-04-23 |  |
| 54 |  | 培训 | 2d | 2020-04-17 | 2020-04-20 | 48 |
| 55 |  | 沟通 | 2d | 2020-04-21 | 2020-04-22 | 54 |
| 56 |  | 组建团队 | 1d | 2020-04-23 | 2020-04-23 | 55 |
| 57 | 5.2 | **项目执行** | 34d | 2020-04-24 | 2020-06-10 | 53 |
| 58 | 5.2.1 | **用户模块** | 6d | 2020-04-24 | 2020-05-01 | 55 |
| 59 |  | 注册登录 | 3d | 2020-04-24 | 2020-04-28 |  |
| 60 |  | 修改信息 | 3d | 2020-04-29 | 2020-05-01 | 59 |
| 61 |  | 修改密码 | 3d | 2020-04-29 | 2020-05-01 | 59 |
| 62 | 5.2.2 | **浏览模块** | 7d | 2020-05-04 | 2020-05-12 | 61 |
| 63 |  | 首页 | 4d | 2020-05-04 | 2020-05-07 |  |
| 64 |  | 要闻推荐 | 4d | 2020-05-04 | 2020-05-07 |  |
| 65 |  | 我的推荐 | 4d | 2020-05-04 | 2020-05-07 |  |
| 66 |  | 要闻搜索 | 3d | 2020-05-08 | 2020-05-12 |  |
| 67 |  | 我的 | 3d | 2020-05-08 | 2020-05-12 |  |
| 68 | 5.2.3 | **资讯发布模块** | 8d | 2020-05-08 | 2020-05-19 |  |
| 69 |  | 身份认证 | 3d | 2020-05-08 | 2020-05-12 |  |
| 70 |  | 信息编辑/修改 | 5d | 2020-05-13 | 2020-05-19 | 69 |
| 71 |  | 发布信息 | 2d | 2020-05-13 | 2020-05-14 | 69 |

| ID | WBS | Task | Duration | Start | Finish | Predecessors |
| --- | --- | --- | --- | --- | --- | --- |
| 72 |  | 删除信息 | 2d | 2020-05-15 | 2020-05-18 | 71 |
| 73 | 5.2.4 | **资讯管理模块** | 2d | 2020-05-15 | 2020-05-18 |  |
| 74 |  | 资讯浏览记录 | 1d | 2020-05-14 | 2020-05-14 |  |
| 75 |  | 资讯评价模块 | 1d | 2020-05-14 | 2020-05-14 |  |
| 76 |  | 资讯收藏模块 | 1d | 2020-05-14 | 2020-05-14 |  |
| 77 |  | 标签模块 | 1d | 2020-05-15 | 2020-05-15 |  |
| 78 | 5.2.5 | **多媒体模块** | 5d | 2020-05-18 | 2020-05-22 |  |
| 79 |  | 文本管理 | 2d | 2020-05-18 | 2020-05-19 |  |
| 80 |  | 图片管理 | 2d | 2020-05-19 | 2020-05-20 |  |
| 81 |  | 视频管理 | 4d | 2020-05-19 | 2020-05-22 |  |
| 82 |  | 音频管理 | 3d | 2020-05-20 | 2020-05-22 |  |
| 83 | 5.2.6 | **数据字典模块** | 5d | 2020-05-21 | 2020-05-27 | 82 |
| 84 | 5.2.6.1 | **分类模块** | 5d | 2020-05-21 | 2020-05-27 |  |
| 85 |  | 新增、修改 | 3d | 2020-05-21 | 2020-05-25 |  |
| 86 |  | 检索 | 3d | 2020-05-25 | 2020-05-27 |  |
| 87 |  | 删除 | 1d | 2020-05-25 | 2020-05-25 |  |
| 88 | 5.2.7 | **专业种类模块** | 4d | 2020-05-25 | 2020-05-28 |  |
| 89 |  | 新建 | 2d | 2020-05-25 | 2020-05-26 |  |
| 90 |  | 修改 | 2d | 2020-05-26 | 2020-05-27 |  |
| 91 |  | 检索 | 2d | 2020-05-26 | 2020-05-27 |  |
| 92 |  | 删除 | 1d | 2020-05-27 | 2020-05-27 |  |
| 93 | 5.2.8 | **设置模块** | 5d | 2020-05-28 | 2020-06-03 |  |
| 94 |  | 基本设置 | 3d | 2020-05-28 | 2020-06-01 |  |
| 95 |  | 检查更新 | 3d | 2020-05-28 | 2020-06-01 |  |
| 96 |  | 帮助反馈 | 2d | 2020-06-02 | 2020-06-03 |  |
| 97 | 5.2.9 | **测试** | 5d | 2020-06-04 | 2020-06-10 | 96 |
| 98 |  | 模块测试 | 3d | 2020-06-04 | 2020-06-08 |  |
| 99 |  | 编写测试报告 | 2d | 2020-06-09 | 2020-06-10 | 98 |
| 100 | 6 | **监控** | 40d | 2020-04-16 | 2020-06-10 |  |
| 101 |  | 各项指标监控 | 40d | 2020-04-16 | 2020-06-10 |  |
| 102 |  | 监控评审 | 40d | 2020-04-16 | 2020-06-10 |  |
| 103 |  | 变更评审 | 40d | 2020-04-16 | 2020-06-10 |  |
| 104 |  | 例会 | 40d | 2020-04-16 | 2020-06-10 |  |
| 105 | 7 | **收尾** | 6d | 2020-06-15 | 2020-06-20 |  |
| 106 |  | 项目终验 | 4d | 2020-06-15 | 2020-06-18 |  |
| 107 |  | 项目内部收尾 | 3d | 2020-06-18 | 2020-06-20 |  |

## Version 2 (saved 2020-04-25)

Note of the change: cheng

Last finish 2020-06-20 → 2020-06-23 (+3d).

Added:

| ID | Task | Duration | Start | Finish | Predecessors | Resources |
| --- | --- | --- | --- | --- | --- | --- |
| 62 | 个人信息管理界面 | 2d | 2020-04-29 | 2020-04-30 | 59 | 林桃 |
| 70 | 真实身份编辑 | 2d | 2020-05-12 | 2020-05-13 | 69 | 周宣 |
| 73 | 资讯发布编辑 | 2d | 2020-05-14 | 2020-05-15 | 72 | 周宣 |

Removed: 67 我的; 83 数据字典模块; 84 分类模块; 85 新增、修改; 86 检索; 87 删除

Changed:

| ID | Task | Start | Finish | Duration | Predecessors | Other |
| --- | --- | --- | --- | --- | --- | --- |
| 1 | **论证** | 2020-03-06 → 2020-03-09 (+3d) | 2020-03-18 → 2020-03-19 (+1d) |  |  |  |
| 2 | 项目愿景 | 2020-03-06 → 2020-03-09 (+3d) | 2020-03-06 → 2020-03-09 (+3d) |  |  |  |
| 3 | 商业机会 | 2020-03-06 → 2020-03-09 (+3d) | 2020-03-06 → 2020-03-09 (+3d) |  |  |  |
| 4 | 问题描述 | 2020-03-09 → 2020-03-10 (+1d) | 2020-03-09 → 2020-03-10 (+1d) |  |  | resources 蔡子轩; 安佳; 李啸昆; 林桃; 刘万里; 周宣 → 安佳 |
| 5 | 用户分析 | 2020-03-10 → 2020-03-11 (+1d) | 2020-03-10 → 2020-03-11 (+1d) |  |  |  |
| 6 | 技术可行性分析 | 2020-03-11 → 2020-03-12 (+1d) | 2020-03-11 → 2020-03-12 (+1d) |  |  |  |
| 7 | 资源分析 | 2020-03-12 → 2020-03-13 (+1d) | 2020-03-12 → 2020-03-13 (+1d) |  |  |  |
| 8 | 收益分析 | 2020-03-10 → 2020-03-11 (+1d) | 2020-03-10 → 2020-03-11 (+1d) |  |  |  |
| 9 | 墨刀原型 | 2020-03-16 → 2020-03-17 (+1d) |  | 3d → 2d |  |  |
| 11 | 组建核心团队 |  |  |  | none → 9 |  |
| 13 | 里程碑 |  |  |  |  | resources 安佳; 林桃 → 林桃 |
| 14 | 制定项目章程 |  |  |  |  | resources 蔡子轩; 李啸昆 → 李啸昆 |
| 25 | 排列工作包顺序 |  |  |  |  | resources none → 安佳 |
| 26 | 估算资源 |  |  |  |  | resources none → 李啸昆 |
| 27 | 估算持续时间 |  |  |  |  | resources none → 林桃 |
| 28 | 制定制度计划 |  |  |  |  | resources none → 刘万里 |
| 29 | 形成进度基准 |  |  |  |  | resources none → 周宣 |
| 31 | 项目成本估量 |  |  |  |  | resources none → 安佳 |
| 32 | 项目预算 |  |  |  |  | resources none → 刘万里; 蔡子轩 |
| 33 | 形成范围基准 |  |  |  |  | resources none → 周宣 |
| 35 | 制定测试计划 |  |  |  |  | resources none → 安佳; 蔡子轩 |
| 36 | 制定测试用例 |  |  |  |  | resources none → 林桃; 刘万里 |
| 38 | 制定人力资源计划 |  |  |  |  | resources none → 蔡子轩; 李啸昆 |
| 39 | 制定人员配备管理 |  |  |  |  | resources none → 刘万里 |
| 41 | 制定沟通管理计划 |  |  |  |  | resources none → 林桃 |
| 43 | 识别风险 |  |  |  |  | resources none → 安佳 |
| 44 | 风险分析 |  |  |  |  | resources none → 安佳 |
| 45 | 制定风险登记册 |  |  |  |  | resources none → 周宣 |
| 46 | 规划整合 |  |  |  |  | resources none → 蔡子轩 |
| 49 | 发布项目信息 |  |  |  |  | resources 安佳; 蔡子轩 → 安佳 |
| 60 | 修改信息 |  | 2020-05-01 → 2020-04-30 (-1d) | 3d → 2d |  |  |
| 61 | 修改密码 |  | 2020-05-01 → 2020-04-30 (-1d) | 3d → 2d |  | resources 蔡子轩; 林桃 → 蔡子轩 |
| 68 | **资讯发布模块** |  | 2020-05-19 → 2020-05-18 (-1d) | 8d → 7d |  |  |
| 69 | 身份认证 |  | 2020-05-12 → 2020-05-11 (-1d) | 3d → 2d |  |  |
| 71 | 资讯编辑/修改 |  | 2020-05-19 → 2020-05-14 (-5d) | 5d → 2d |  | was named 信息编辑/修改; resources 安佳; 周宣 → 安佳 |
| 72 | 发布信息 | 2020-05-13 → 2020-05-12 (-1d) | 2020-05-14 → 2020-05-13 (-1d) |  |  |  |
| 95 | 模块测试 |  |  |  |  | resources 蔡子轩; 李啸昆; 林桃; 刘万里; 周宣; 安佳 → 蔡子轩; 李啸昆; 安佳 |
| 102 | **收尾** |  | 2020-06-20 → 2020-06-23 (+3d) | 6d → 7d |  |  |
| 103 | 项目终验 |  |  |  |  | resources none → 蔡子轩; 李啸昆 |
| 104 | 项目内部收尾 | 2020-06-18 → 2020-06-19 (+1d) | 2020-06-20 → 2020-06-23 (+3d) |  |  | resources none → 安佳; 蔡子轩; 李啸昆; 林桃; 刘万里; 周宣 |
